# Проект name

How a schedule from MS Project changed from version to version. A marks actual dates.

## Version 1 (data date 2021-05-05, saved 2021-03-23, file lab_04_1_2.mpp)

Note of the change: :pencil: complete tasks

| ID | WBS | Task | Duration | Start | Finish | Predecessors | Complete | Total float | Constraint |
| --- | --- | --- | --- | --- | --- | --- | --- | --- | --- |
| 1 |  | Начало проекта | 0w | 2021-03-01 09:00 A | 2021-03-01 09:00 A |  | 100% |  |  |
| 2 | 2 | **Создание интерфейса** | 79.89d | 2021-03-01 09:00 A | 2021-07-08 17:00 | 1 | 81% | 5.89d |  |
| 3 | 2.1 | **Разработка дизайна интерфейса** | 25.89d | 2021-03-01 09:00 A | 2021-04-12 10:00 A |  | 100% |  |  |
| 4 |  | Разработка 2D графических элементов | 2.67w | 2021-03-01 09:00 A | 2021-03-23 12:00 A |  | 100% |  |  |
| 5 |  | Разработка 3D графических элементов | 1.78w | 2021-03-01 09:00 A | 2021-03-16 11:00 A | 4SS | 100% |  |  |
| 6 |  | Создание заставки | 3.27w | 2021-03-16 11:00 A | 2021-04-12 10:00 A | 5 | 100% |  |  |
| 7 |  | Программирование интерфейса | 1.78w | 2021-06-25 18:00 | 2021-07-08 17:00 | 3, 12 |  | 5.89d |  |
| 8 | 3 | **Построение базы объектов** | 71.56d | 2021-03-23 12:00 A | 2021-07-16 17:00 |  | 25% | 20.22d |  |
| 9 |  | Построение базы объектов | 1.78w | 2021-03-23 12:00 A | 2021-04-06 15:00 A |  | 100% |  |  |
| 10 |  | Программирование средств обработки базы объектов | 1.82w | 2021-04-06 15:00 A | 2021-04-20 17:00 A | 9 | 100% |  |  |
| 11 |  | Наполнение базы объектов | 10.67w | 2021-04-20 17:00 | 2021-07-16 17:00 | 10 |  | 20.22d |  |
| 12 | 4 | **Создание ядра GIS** | 72d | 2021-03-01 09:00 A | 2021-06-25 18:00 |  | 48% | 5.89d |  |
| 13 |  | Анализ и проектирование ядра | 2.67w | 2021-03-01 09:00 A | 2021-03-23 12:00 A |  | 100% |  |  |
| 14 |  | Создание модели ядра | 4.56w | 2021-03-23 12:00 A | 2021-04-27 18:00 A | 13 | 100% |  |  |
| 15 |  | Тестирование модели ядра | 0.89w | 2021-04-27 18:00 | 2021-05-05 12:00 | 14 |  | 5.89d |  |
| 16 |  | Создание рабочей версии ядра | 7w | 2021-05-05 12:00 | 2021-06-25 18:00 | 15 |  | 5.89d |  |
| 17 |  | Создание мультимедиа – наполнения | 5.33w | 2021-04-12 10:00 | 2021-05-28 15:00 | 3 |  | 50.67d |  |
| 18 |  | Создание справочной системы | 1.78w | 2021-08-04 10:00 | 2021-08-18 15:00 | 7 |  | 0d | finish no earlier than 2021-08-05 18:00 |
| 19 | 7 | **Создание руководства пользователя** | 16.33d | 2021-06-24 17:00 | 2021-07-21 11:00 | 7FS-8.89d |  | 5.78d |  |
| 20 |  | Разработка дизайна руководства | 0.89w | 2021-06-24 17:00 | 2021-07-02 11:00 |  |  | 5.89d |  |
| 21 |  | Написание руководства пользователя | 2.67w | 2021-06-29 09:00 | 2021-07-21 11:00 | 20SS+1.78d |  | 5.78d |  |
| 22 | 8 | **Создание web – сайта и поддержка** | 22d | 2021-06-29 09:00 | 2021-08-02 16:00 |  |  | 5.78d |  |
| 23 |  | Разработка структуры сайта | 0.89d | 2021-06-29 09:00 | 2021-06-29 18:00 | 21SS |  | 5.78d |  |
| 24 |  | Разработка дизайна сайта | 1.27w | 2021-06-30 10:00 | 2021-07-09 15:00 | 23 |  | 5.78d |  |
| 25 |  | Наполнение сайта | 2.67w | 2021-07-09 15:00 | 2021-08-02 16:00 | 24 |  | 5.78d |  |
| 26 |  | Тестирование сайта | 2.04w | 2021-07-26 16:00 | 2021-08-10 10:00 | 22FS-0.89w |  | 5.78d |  |
| 27 |  | Сдача сайта в эксплуатацию | 0w | 2021-08-10 10:00 | 2021-08-10 10:00 | 26 |  | 5.78d |  |
| 28 | 11 | **Совещание** | 94.33d | 2021-03-03 09:00 | 2021-08-04 10:00 |  |  | 0d |  |
| 29 |  | Совещание 1 | 1h | 2021-03-03 09:00 | 2021-03-03 10:00 |  |  |  | start no earlier than 2021-03-03 09:00 |
| 30 |  | Совещание 2 | 1h | 2021-03-10 09:00 | 2021-03-10 10:00 |  |  |  | start no earlier than 2021-03-10 09:00 |
| 31 |  | Совещание 3 | 1h | 2021-03-17 09:00 | 2021-03-17 10:00 |  |  |  | start no earlier than 2021-03-17 09:00 |
| 32 |  | Совещание 4 | 1h | 2021-03-24 09:00 | 2021-03-24 10:00 |  |  |  | start no earlier than 2021-03-24 09:00 |
| 33 |  | Совещание 5 | 1h | 2021-03-31 09:00 | 2021-03-31 10:00 |  |  |  | start no earlier than 2021-03-31 09:00 |
| 34 |  | Совещание 6 | 1h | 2021-04-07 09:00 | 2021-04-07 10:00 |  |  |  | start no earlier than 2021-04-07 09:00 |
| 35 |  | Совещание 7 | 1h | 2021-04-14 09:00 | 2021-04-14 10:00 |  |  |  | start no earlier than 2021-04-14 09:00 |
| 36 |  | Совещание 8 | 1h | 2021-04-21 09:00 | 2021-04-21 10:00 |  |  |  | start no earlier than 2021-04-21 09:00 |
| 37 |  | Совещание 9 | 1h | 2021-04-28 09:00 | 2021-04-28 10:00 |  |  |  | start no earlier than 2021-04-28 09:00 |
| 38 |  | Совещание 10 | 1h | 2021-05-05 09:00 | 2021-05-05 10:00 |  |  |  | start no earlier than 2021-05-05 09:00 |
| 39 |  | Совещание 11 | 1h | 2021-05-12 09:00 | 2021-05-12 10:00 |  |  |  | start no earlier than 2021-05-12 09:00 |
| 40 |  | Совещание 12 | 1h | 2021-05-19 09:00 | 2021-05-19 10:00 |  |  |  | start no earlier than 2021-05-19 09:00 |
| 41 |  | Совещание 13 | 1h | 2021-05-26 09:00 | 2021-05-26 10:00 |  |  |  | start no earlier than 2021-05-26 09:00 |
| 42 |  | Совещание 14 | 1h | 2021-06-02 09:00 | 2021-06-02 10:00 |  |  |  | start no earlier than 2021-06-02 09:00 |
| 43 |  | Совещание 15 | 1h | 2021-06-09 09:00 | 2021-06-09 10:00 |  |  |  | start no earlier than 2021-06-09 09:00 |
| 44 |  | Совещание 16 | 1h | 2021-06-16 09:00 | 2021-06-16 10:00 |  |  |  | start no earlier than 2021-06-16 09:00 |
| 45 |  | Совещание 17 | 1h | 2021-06-23 09:00 | 2021-06-23 10:00 |  |  |  | start no earlier than 2021-06-23 09:00 |
| 46 |  | Совещание 18 | 1h | 2021-06-30 09:00 | 2021-06-30 10:00 |  |  |  | start no earlier than 2021-06-30 09:00 |
| 47 |  | Совещание 19 | 1h | 2021-07-07 09:00 | 2021-07-07 10:00 |  |  |  | start no earlier than 2021-07-07 09:00 |
| 48 |  | Совещание 20 | 1h | 2021-07-14 09:00 | 2021-07-14 10:00 |  |  |  | start no earlier than 2021-07-14 09:00 |
| 49 |  | Совещание 21 | 1h | 2021-07-21 09:00 | 2021-07-21 10:00 |  |  |  | start no earlier than 2021-07-21 09:00 |
| 50 |  | Совещание 22 | 1h | 2021-07-28 09:00 | 2021-07-28 10:00 |  |  |  | start no earlier than 2021-07-28 09:00 |
| 51 |  | Совещание 23 | 1h | 2021-08-04 09:00 | 2021-08-04 10:00 |  |  |  | start no earlier than 2021-08-04 09:00 |

## Version 2 (data date 2021-05-05, saved 2021-03-23, file lab_04_3_4.mpp)

Note of the change: :pencil: complete tasks

Last finish stays 2021-08-18. Complete tasks 8 → 7.

Changed:

| ID | Task | Finish | Complete | Total float |
| --- | --- | --- | --- | --- |
| 8 | **Построение базы объектов** |  | 25% → 23% |  |
| 10 | Программирование средств обработки базы объектов | 2021-04-20 17:00 A → 2021-04-20 17:00 | 100% → 80% | none → 20.22d |

## Version 3 (data date 2021-05-05, saved 2021-03-23, file lab_04_5.mpp)

Note of the change: :twisted_rightwards_arrows: Merge branch 'feature/lab_04' into develop

Last finish stays 2021-08-18. Complete tasks 7 → 17.

Changed:

| ID | Task | Start | Finish | Duration | Complete | Total float | Other |
| --- | --- | --- | --- | --- | --- | --- | --- |
| 28 | **Совещание** | 2021-03-03 09:00 A |  |  | 0% → 44% | 0d → 9.33d |  |
| 29 | Совещание 1 | 2021-03-03 09:00 A | 2021-03-03 10:00 A |  | 0% → 100% |  |  |
| 30 | Совещание 2 | 2021-03-10 09:00 A | 2021-03-10 10:00 A |  | 0% → 100% |  |  |
| 31 | Совещание 3 | 2021-03-17 09:00 A | 2021-03-17 10:00 A |  | 0% → 100% |  |  |
| 32 | Совещание 4 | 2021-03-24 09:00 A | 2021-03-24 10:00 → 2021-03-24 10:15 A | 1h → 1.25h | 0% → 100% |  | resources 3D-аниматор; Web-дизайнер; Ведущий программист; Мультимедиа-корреспондент; Системный аналитик; Технический писатель; Художник-дизайнер → 3D-аниматор; Web-дизайнер; Ведущий программист; Мультимедиа-корреспондент; Системный аналитик [80%]; Технический писатель; Художник-дизайнер |
| 33 | Совещание 5 | 2021-03-31 09:00 A | 2021-03-31 10:00 A |  | 0% → 100% |  |  |
| 34 | Совещание 6 | 2021-04-07 09:00 A | 2021-04-07 10:00 A |  | 0% → 100% |  |  |
| 35 | Совещание 7 | 2021-04-14 09:00 A | 2021-04-14 10:00 A |  | 0% → 100% |  |  |
| 36 | Совещание 8 | 2021-04-21 09:00 A | 2021-04-21 10:00 A |  | 0% → 100% |  |  |
| 37 | Совещание 9 | 2021-04-28 09:00 A | 2021-04-28 10:00 A |  | 0% → 100% |  |  |
| 38 | Совещание 10 | 2021-05-05 09:00 A | 2021-05-05 10:00 A |  | 0% → 100% |  |  |

## Version 4 (data date 2021-05-05, saved 2021-03-23, file lab_04_6.mpp)

Note of the change: :pencil: complete tasks

Last finish stays 2021-08-18. Complete tasks 17 → 18.

Changed:

| ID | Task | Start | Finish | Duration | Complete | Total float |
| --- | --- | --- | --- | --- | --- | --- |
| 2 | **Создание интерфейса** |  | 2021-07-08 17:00 → 2021-07-09 16:09 (+1d) | 79.89d → 80.68d |  | 5.89d → 5.09d |
| 7 | Программирование интерфейса | 2021-06-25 18:00 → 2021-06-28 17:09 (+3d) | 2021-07-08 17:00 → 2021-07-09 16:09 (+1d) |  |  | 5.89d → 5.09d |
| 12 | **Создание ядра GIS** |  | 2021-06-25 18:00 → 2021-06-28 17:09 (+3d) | 72d → 72.79d | 48% → 54% | 5.89d → 5.09d |
| 15 | Тестирование модели ядра | 2021-04-27 18:00 A | 2021-05-05 12:00 → 2021-05-06 11:09 A (+1d) | 0.89w → 1.07w | 0% → 100% | 5.89d → none |
| 16 | Создание рабочей версии ядра | 2021-05-05 12:00 → 2021-05-06 11:09 (+1d) | 2021-06-25 18:00 → 2021-06-28 17:09 (+3d) |  |  | 5.89d → 5.09d |
| 19 | **Создание руководства пользователя** | 2021-06-24 17:00 → 2021-06-25 16:09 (+1d) | 2021-07-21 11:00 → 2021-07-22 10:09 (+1d) |  |  | 5.78d → 4.98d |
| 20 | Разработка дизайна руководства | 2021-06-24 17:00 → 2021-06-25 16:09 (+1d) | 2021-07-02 11:00 → 2021-07-05 10:09 (+3d) |  |  | 5.89d → 5.09d |
| 21 | Написание руководства пользователя | 2021-06-29 09:00 → 2021-06-29 17:09 | 2021-07-21 11:00 → 2021-07-22 10:09 (+1d) |  |  | 5.78d → 4.98d |
| 22 | **Создание web – сайта и поддержка** | 2021-06-29 09:00 → 2021-06-29 17:09 | 2021-08-02 16:00 → 2021-08-03 15:00 (+1d) | 22d → 21.98d |  | 5.78d → 4.98d |
| 23 | Разработка структуры сайта | 2021-06-29 09:00 → 2021-06-29 17:09 | 2021-06-29 18:00 → 2021-06-30 17:09 (+1d) |  |  | 5.78d → 4.98d |
| 24 | Разработка дизайна сайта | 2021-06-30 10:00 → 2021-07-01 09:00 (+1d) | 2021-07-09 15:00 → 2021-07-12 13:00 (+3d) |  |  | 5.78d → 5d |
| 25 | Наполнение сайта | 2021-07-09 15:00 → 2021-07-12 14:00 (+3d) | 2021-08-02 16:00 → 2021-08-03 15:00 (+1d) |  |  | 5.78d → 5d |
| 26 | Тестирование сайта | 2021-07-26 16:00 → 2021-07-27 15:00 (+1d) | 2021-08-10 10:00 → 2021-08-10 18:00 |  |  | 5.78d → 5d |
| 27 | Сдача сайта в эксплуатацию | 2021-08-10 10:00 → 2021-08-10 18:00 | 2021-08-10 10:00 → 2021-08-10 18:00 |  |  | 5.78d → 5d |

## Version 5 (data date 2021-05-05, saved 2021-03-23, file lab_04_6.mpp)

Note of the change: :twisted_rightwards_arrows: Merge branch 'release/rk_01'

Last finish stays 2021-08-18.

Changed:

| ID | Task | Start | Finish | Duration | Total float |
| --- | --- | --- | --- | --- | --- |
| 3 | **Разработка дизайна интерфейса** |  | 2021-04-12 10:00 A → 2021-04-09 19:00 A (-3d) | 25.89d → 25.78d |  |
| 6 | Создание заставки |  | 2021-04-12 10:00 A → 2021-04-09 19:00 A (-3d) | 3.27w → 3.24w |  |
| 17 | Создание мультимедиа – наполнения | 2021-04-12 10:00 → 2021-04-12 09:00 | 2021-05-28 15:00 → 2021-05-28 13:00 |  | 50.67d → 50.78d |

## Version 6 (data date 2021-05-05, saved 2021-03-30, file lab_04_complete.mpp)

Note of the change: :twisted_rightwards_arrows: Merge branch 'feature/lab_05' into develop

Last finish stays 2021-08-18. Complete tasks 18 → 17.

Changed:

| ID | Task | Start | Finish | Duration | Complete | Total float | Predecessors | Other |
| --- | --- | --- | --- | --- | --- | --- | --- | --- |
| 1 | Начало проекта | 2021-03-01 09:00 A → 2021-03-01 09:00 | 2021-03-01 09:00 A → 2021-03-01 09:00 |  | 100% → 0% | none → 0d |  | baseline start none → 2021-03-01 09:00; baseline finish none → 2021-03-01 09:00 |
| 2 | **Создание интерфейса** |  | 2021-07-09 16:09 → 2021-07-21 10:36 (+12d) | 80.68d → 98.2d |  | 5.09d → 0.12d |  | baseline start none → 2021-03-01 09:00; baseline finish none → 2021-07-09 18:00 |
| 3 | **Разработка дизайна интерфейса** |  | 2021-04-09 19:00 A → 2021-04-12 10:00 A (+3d) | 25.78d → 29.12d |  |  |  | baseline start none → 2021-03-01 09:00; baseline finish none → 2021-04-06 15:00 |
| 4 | Разработка 2D графических элементов |  |  | 2.67w → 3w |  |  |  | baseline start none → 2021-03-01 09:00; baseline finish none → 2021-03-23 12:00 |
| 5 | Разработка 3D графических элементов |  |  | 1.78w → 2w |  |  |  | baseline start none → 2021-03-01 09:00; baseline finish none → 2021-03-16 11:00 |
| 6 | Создание заставки |  | 2021-04-09 19:00 A → 2021-04-12 10:00 A (+3d) | 3.24w → 3.67w |  |  |  | baseline start none → 2021-03-16 11:00; baseline finish none → 2021-04-06 15:00 |
| 7 | Программирование интерфейса | 2021-06-28 17:09 → 2021-07-08 11:36 (+10d) | 2021-07-09 16:09 → 2021-07-21 10:36 (+12d) | 1.78w → 2w |  | 5.09d → 0.12d |  | baseline start none → 2021-06-28 09:00; baseline finish none → 2021-07-09 18:00 |
| 8 | **Построение базы объектов** | 2021-03-23 12:00 A → 2021-03-01 09:00 A (-22d) | 2021-07-16 17:00 → 2021-07-15 13:00 (-1d) | 71.56d → 94.5d | 23% → 25% | 20.22d → 23.57d |  | baseline start none → 2021-03-23 12:00; baseline finish none → 2021-07-16 17:00 |
| 9 | Построение базы объектов | 2021-03-23 12:00 A → 2021-03-01 09:00 A (-22d) | 2021-04-06 15:00 A → 2021-03-16 11:00 A (-21d) | 1.78w → 2w |  |  |  | baseline start none → 2021-03-23 12:00; baseline finish none → 2021-04-06 15:00 |
| 10 | Программирование средств обработки базы объектов |  | 2021-04-20 17:00 → 2021-04-19 13:00 A (-1d) | 1.82w → 2w | 80% → 100% | 20.22d → none |  | resources Программист №3; Программист №4; Программист №2 → Программист №3; Программист №4; baseline start none → 2021-04-06 15:00; baseline finish none → 2021-04-20 17:00 |
| 11 | Наполнение базы объектов | 2021-04-20 17:00 → 2021-04-19 14:00 (-1d) | 2021-07-16 17:00 → 2021-07-15 13:00 (-1d) | 10.67w → 12w |  | 20.22d → 23.57d |  | baseline start none → 2021-04-20 17:00; baseline finish none → 2021-07-16 17:00 |
| 12 | **Создание ядра GIS** |  | 2021-06-28 17:09 → 2021-07-08 11:36 (+10d) | 72.79d → 89.33d | 54% → 29% | 5.09d → 0.12d |  | baseline start none → 2021-03-01 09:00; baseline finish none → 2021-06-25 18:00 |
| 13 | Анализ и проектирование ядра |  | 2021-03-23 12:00 A → 2021-04-09 14:36 A (+17d) | 2.67w → 5.05w |  |  |  | baseline start none → 2021-03-01 09:00; baseline finish none → 2021-03-23 12:00 |
| 14 | Создание модели ядра | 2021-03-23 12:00 A → 2021-04-09 14:36 (+17d) | 2021-04-27 18:00 A → 2021-07-07 12:36 (+71d) | 4.56w → 6.04w | 100% → 0% | none → 1d |  | baseline start none → 2021-03-23 12:00; baseline finish none → 2021-04-27 18:00 |
| 15 | Тестирование модели ядра |  | 2021-05-06 11:09 A → 2021-05-06 11:00 A | 1.07w → 1.2w |  |  |  | baseline start none → 2021-04-28 09:00; baseline finish none → 2021-05-05 18:00 |
| 16 | Создание рабочей версии ядра | 2021-05-06 11:09 → 2021-05-06 11:00 | 2021-06-28 17:09 → 2021-07-08 11:36 (+10d) | 7w → 9.53w |  | 5.09d → 0.12d |  | baseline start none → 2021-05-06 09:00; baseline finish none → 2021-06-25 18:00 |
| 17 | Создание мультимедиа – наполнения | 2021-04-12 09:00 → 2021-04-12 10:00 | 2021-05-28 13:00 → 2021-05-26 18:00 (-2d) | 5.33w → 6w |  | 50.78d → 58.08d |  | baseline start none → 2021-04-06 15:00; baseline finish none → 2021-05-21 13:00 |
| 18 | Создание справочной системы | 2021-08-04 10:00 → 2021-07-30 15:36 (-5d) | 2021-08-18 15:00 → 2021-08-13 16:36 (-5d) | 1.78w → 2w |  | 0d → 2.25d |  | constraint finish no earlier than 2021-08-05 18:00 → none; baseline start none → 2021-07-22 09:00; baseline finish none → 2021-08-05 13:00 |
| 19 | **Создание руководства пользователя** | 2021-06-25 16:09 → 2021-07-07 11:36 (+12d) | 2021-07-22 10:09 → 2021-07-30 15:36 (+8d) | 16.33d → 17.38d |  | 4.98d → 0d | 7FS-8.89d → 7FS-10d | baseline start none → 2021-06-28 09:00; baseline finish none → 2021-07-21 17:00 |
| 20 | Разработка дизайна руководства | 2021-06-25 16:09 → 2021-07-07 11:36 (+12d) | 2021-07-05 10:09 → 2021-07-14 12:36 (+9d) | 0.89w → 1w |  | 5.09d → 0d |  | baseline start none → 2021-06-28 09:00; baseline finish none → 2021-07-05 11:00 |
| 21 | Написание руководства пользователя | 2021-06-29 17:09 → 2021-07-09 11:36 (+10d) | 2021-07-22 10:09 → 2021-07-30 15:36 (+8d) | 2.67w → 3w |  | 4.98d → 0d | 20SS+1.78d → 20SS+2d | baseline start none → 2021-06-30 10:00; baseline finish none → 2021-07-21 17:00 |
| 22 | **Создание web – сайта и поддержка** | 2021-06-29 17:09 → 2021-07-09 11:36 (+10d) | 2021-08-03 15:00 → 2021-08-11 16:36 (+8d) | 21.98d → 23.5d |  | 4.98d → 0d |  | baseline start none → 2021-06-30 10:00; baseline finish none → 2021-08-03 11:00 |
| 23 | Разработка структуры сайта | 2021-06-29 17:09 → 2021-07-09 11:36 (+10d) | 2021-06-30 17:09 → 2021-07-12 11:36 (+12d) | 0.89d → 1d |  | 4.98d → 0d |  | baseline start none → 2021-06-30 10:00; baseline finish none → 2021-07-01 10:00 |
| 24 | Разработка дизайна сайта | 2021-07-01 09:00 → 2021-07-12 11:36 (+11d) | 2021-07-12 13:00 → 2021-07-21 14:36 (+9d) | 1.27w → 1.4w |  | 5d → 0d |  | baseline start none → 2021-07-01 10:00; baseline finish none → 2021-07-12 13:00 |
| 25 | Наполнение сайта | 2021-07-12 14:00 → 2021-07-21 14:36 (+9d) | 2021-08-03 15:00 → 2021-08-11 16:36 (+8d) | 2.67w → 3w |  | 5d → 0d |  | baseline start none → 2021-07-12 14:00; baseline finish none → 2021-08-03 11:00 |
| 26 | Тестирование сайта | 2021-07-27 15:00 → 2021-08-04 16:36 (+8d) | 2021-08-10 18:00 → 2021-08-18 09:36 (+8d) | 2.04w → 2.08w |  | 5d → 0d | 22FS-0.89w → 22FS-1w | baseline start none → 2021-07-27 11:00; baseline finish none → 2021-08-10 11:00 |
| 27 | Сдача сайта в эксплуатацию | 2021-08-10 18:00 → 2021-08-18 09:36 (+8d) | 2021-08-10 18:00 → 2021-08-18 09:36 (+8d) |  |  | 5d → 0d |  | baseline start none → 2021-08-10 11:00; baseline finish none → 2021-08-10 11:00 |
| 28 | **Совещание** |  |  | 94.33d → 106.12d | 44% → 43% | 9.33d → 0d |  | baseline start none → 2021-03-03 09:00; baseline finish none → 2021-08-04 10:00 |
| 29 | Совещание 1 |  |  |  |  |  |  | baseline start none → 2021-03-03 09:00; baseline finish none → 2021-03-03 10:00 |
| 30 | Совещание 2 |  |  |  |  |  |  | baseline start none → 2021-03-10 09:00; baseline finish none → 2021-03-10 10:00 |
| 31 | Совещание 3 |  |  |  |  |  |  | baseline start none → 2021-03-17 09:00; baseline finish none → 2021-03-17 10:00 |
| 32 | Совещание 4 |  | 2021-03-24 10:15 A → 2021-03-24 10:00 A | 1.25h → 1h |  |  |  | baseline start none → 2021-03-24 09:00; baseline finish none → 2021-03-24 10:00 |
| 33 | Совещание 5 |  |  |  |  |  |  | resources 3D-аниматор; Web-дизайнер; Ведущий программист; Мультимедиа-корреспондент; Системный аналитик; Технический писатель; Художник-дизайнер → 3D-аниматор; Web-дизайнер; Ведущий программист; Мультимедиа-корреспондент; Системный аналитик [80%]; Технический писатель; Художник-дизайнер; baseline start none → 2021-03-31 09:00; baseline finish none → 2021-03-31 10:00 |
| 34 | Совещание 6 |  |  |  |  |  |  | resources 3D-аниматор; Web-дизайнер; Ведущий программист; Мультимедиа-корреспондент; Системный аналитик; Технический писатель; Художник-дизайнер → 3D-аниматор; Web-дизайнер; Ведущий программист; Мультимедиа-корреспондент; Системный аналитик [80%]; Технический писатель; Художник-дизайнер; baseline start none → 2021-04-07 09:00; baseline finish none → 2021-04-07 10:00 |
| 35 | Совещание 7 |  |  |  |  |  |  | resources 3D-аниматор; Web-дизайнер; Ведущий программист; Мультимедиа-корреспондент; Системный аналитик; Технический писатель; Художник-дизайнер → 3D-аниматор; Web-дизайнер; Ведущий программист; Мультимедиа-корреспондент; Системный аналитик [80%]; Технический писатель; Художник-дизайнер; baseline start none → 2021-04-14 09:00; baseline finish none → 2021-04-14 10:00 |
| 36 | Совещание 8 |  |  |  |  |  |  | resources 3D-аниматор; Web-дизайнер; Ведущий программист; Мультимедиа-корреспондент; Системный аналитик; Технический писатель; Художник-дизайнер → 3D-аниматор; Web-дизайнер; Ведущий программист; Мультимедиа-корреспондент; Системный аналитик [80%]; Технический писатель; Художник-дизайнер; baseline start none → 2021-04-21 09:00; baseline finish none → 2021-04-21 10:00 |
| 37 | Совещание 9 |  |  |  |  |  |  | resources 3D-аниматор; Web-дизайнер; Ведущий программист; Мультимедиа-корреспондент; Системный аналитик; Технический писатель; Художник-дизайнер → 3D-аниматор; Web-дизайнер; Ведущий программист; Мультимедиа-корреспондент; Системный аналитик [80%]; Технический писатель; Художник-дизайнер; baseline start none → 2021-04-28 09:00; baseline finish none → 2021-04-28 10:00 |
| 38 | Совещание 10 |  |  |  |  |  |  | resources 3D-аниматор; Web-дизайнер; Ведущий программист; Мультимедиа-корреспондент; Системный аналитик; Технический писатель; Художник-дизайнер → 3D-аниматор; Web-дизайнер; Ведущий программист; Мультимедиа-корреспондент; Системный аналитик [80%]; Технический писатель; Художник-дизайнер; baseline start none → 2021-05-05 09:00; baseline finish none → 2021-05-05 10:00 |
| 39 | Совещание 11 |  |  |  |  | 61.78d → none |  | resources 3D-аниматор; Web-дизайнер; Ведущий программист; Мультимедиа-корреспондент; Системный аналитик; Технический писатель; Художник-дизайнер → 3D-аниматор; Web-дизайнер; Ведущий программист; Мультимедиа-корреспондент; Системный аналитик [80%]; Технический писатель; Художник-дизайнер; baseline start none → 2021-05-12 09:00; baseline finish none → 2021-05-12 10:00 |
| 40 | Совещание 12 |  |  |  |  | 57.33d → none |  | resources 3D-аниматор; Web-дизайнер; Ведущий программист; Мультимедиа-корреспондент; Системный аналитик; Технический писатель; Художник-дизайнер → 3D-аниматор; Web-дизайнер; Ведущий программист; Мультимедиа-корреспондент; Системный аналитик [80%]; Технический писатель; Художник-дизайнер; baseline start none → 2021-05-19 09:00; baseline finish none → 2021-05-19 10:00 |
| 41 | Совещание 13 |  |  |  |  | 52.89d → none |  | resources 3D-аниматор; Web-дизайнер; Ведущий программист; Мультимедиа-корреспондент; Системный аналитик; Технический писатель; Художник-дизайнер → 3D-аниматор; Web-дизайнер; Ведущий программист; Мультимедиа-корреспондент; Системный аналитик [80%]; Технический писатель; Художник-дизайнер; baseline start none → 2021-05-26 09:00; baseline finish none → 2021-05-26 10:00 |
| 42 | Совещание 14 |  |  |  |  | 48.44d → none |  | resources 3D-аниматор; Web-дизайнер; Ведущий программист; Мультимедиа-корреспондент; Системный аналитик; Технический писатель; Художник-дизайнер → 3D-аниматор; Web-дизайнер; Ведущий программист; Мультимедиа-корреспондент; Системный аналитик [80%]; Технический писатель; Художник-дизайнер; baseline start none → 2021-06-02 09:00; baseline finish none → 2021-06-02 10:00 |
| 43 | Совещание 15 |  |  |  |  | 44d → none |  | resources 3D-аниматор; Web-дизайнер; Ведущий программист; Мультимедиа-корреспондент; Системный аналитик; Технический писатель; Художник-дизайнер → 3D-аниматор; Web-дизайнер; Ведущий программист; Мультимедиа-корреспондент; Системный аналитик [80%]; Технический писатель; Художник-дизайнер; baseline start none → 2021-06-09 09:00; baseline finish none → 2021-06-09 10:00 |
| 44 | Совещание 16 |  |  |  |  | 40.44d → none |  | resources 3D-аниматор; Web-дизайнер; Ведущий программист; Мультимедиа-корреспондент; Системный аналитик; Технический писатель; Художник-дизайнер → 3D-аниматор; Web-дизайнер; Ведущий программист; Мультимедиа-корреспондент; Системный аналитик [80%]; Технический писатель; Художник-дизайнер; baseline start none → 2021-06-16 09:00; baseline finish none → 2021-06-16 10:00 |
| 45 | Совещание 17 |  |  |  |  | 36d → none |  | resources 3D-аниматор; Web-дизайнер; Ведущий программист; Мультимедиа-корреспондент; Системный аналитик; Технический писатель; Художник-дизайнер → 3D-аниматор; Web-дизайнер; Ведущий программист; Мультимедиа-корреспондент; Системный аналитик [80%]; Технический писатель; Художник-дизайнер; baseline start none → 2021-06-23 09:00; baseline finish none → 2021-06-23 10:00 |
| 46 | Совещание 18 |  |  |  |  | 31.56d → none |  | resources 3D-аниматор; Web-дизайнер; Ведущий программист; Мультимедиа-корреспондент; Системный аналитик; Технический писатель; Художник-дизайнер → 3D-аниматор; Web-дизайнер; Ведущий программист; Мультимедиа-корреспондент; Системный аналитик [80%]; Технический писатель; Художник-дизайнер; baseline start none → 2021-06-30 09:00; baseline finish none → 2021-06-30 10:00 |
| 47 | Совещание 19 |  |  |  |  | 27.11d → none |  | resources 3D-аниматор; Web-дизайнер; Ведущий программист; Мультимедиа-корреспондент; Системный аналитик; Технический писатель; Художник-дизайнер → 3D-аниматор; Web-дизайнер; Ведущий программист; Мультимедиа-корреспондент; Системный аналитик [80%]; Технический писатель; Художник-дизайнер; baseline start none → 2021-07-07 09:00; baseline finish none → 2021-07-07 10:00 |
| 48 | Совещание 20 |  |  |  |  | 22.67d → none |  | resources 3D-аниматор; Web-дизайнер; Ведущий программист; Мультимедиа-корреспондент; Системный аналитик; Технический писатель; Художник-дизайнер → 3D-аниматор; Web-дизайнер; Ведущий программист; Мультимедиа-корреспондент; Системный аналитик [80%]; Технический писатель; Художник-дизайнер; baseline start none → 2021-07-14 09:00; baseline finish none → 2021-07-14 10:00 |
| 49 | Совещание 21 |  |  |  |  | 18.22d → none |  | resources 3D-аниматор; Web-дизайнер; Ведущий программист; Мультимедиа-корреспондент; Системный аналитик; Технический писатель; Художник-дизайнер → 3D-аниматор; Web-дизайнер; Ведущий программист; Мультимедиа-корреспондент; Системный аналитик [80%]; Технический писатель; Художник-дизайнер; baseline start none → 2021-07-21 09:00; baseline finish none → 2021-07-21 10:00 |
| 50 | Совещание 22 |  |  |  |  | 13.78d → none |  | resources 3D-аниматор; Web-дизайнер; Ведущий программист; Мультимедиа-корреспондент; Системный аналитик; Технический писатель; Художник-дизайнер → 3D-аниматор; Web-дизайнер; Ведущий программист; Мультимедиа-корреспондент; Системный аналитик [80%]; Технический писатель; Художник-дизайнер; baseline start none → 2021-07-28 09:00; baseline finish none → 2021-07-28 10:00 |
| 51 | Совещание 23 |  |  |  |  | 9.33d → none |  | resources 3D-аниматор; Web-дизайнер; Ведущий программист; Мультимедиа-корреспондент; Системный аналитик; Технический писатель; Художник-дизайнер → 3D-аниматор; Web-дизайнер; Ведущий программист; Мультимедиа-корреспондент; Системный аналитик [80%]; Технический писатель; Художник-дизайнер; baseline start none → 2021-08-04 09:00; baseline finish none → 2021-08-04 10:00 |
