# rk_01

How a schedule from MS Project changed from version to version. A marks actual dates.

## Version 1 (saved 2021-03-30, file rk_01_1-2.mpp)

Note of the change: :twisted_rightwards_arrows: Merge branch 'release/rk_01'

| ID | Task | Duration | Start | Finish |
| --- | --- | --- | --- | --- |
| 1 | Начало реализации проекта | 0d | 2021-04-05 | 2021-04-05 |
| 2 | Программирование | 1d | 2021-04-05 | 2021-04-05 |
| 3 | Постановка задачи | 5d | 2021-04-05 | 2021-04-09 |
| 4 | Разработка интерфейса | 10d | 2021-04-05 | 2021-04-16 |
| 5 | Разработка модулей обработки данных | 15d | 2021-04-05 | 2021-04-23 |
| 6 | Разработка базы данных | 15d | 2021-04-05 | 2021-04-23 |
| 7 | Заполнение базы данных | 12d | 2021-04-05 | 2021-04-20 |
| 8 | Программирование завершено | 0d | 2021-04-05 | 2021-04-05 |
| 9 | Тестирование и отладка | 1d | 2021-04-05 | 2021-04-05 |
| 10 | Подготовка тестовых наборов данных | 5d | 2021-04-05 | 2021-04-09 |
| 11 | Тестирование и исправление ошибок | 15d | 2021-04-05 | 2021-04-23 |
| 12 | Отладка завершена | 0d | 2021-04-05 | 2021-04-05 |
| 13 | Разработка документации | 1d | 2021-04-05 | 2021-04-05 |
| 14 | Составление программной документации | 10d | 2021-04-05 | 2021-04-16 |
| 15 | Составление пользовательской документации | 15d | 2021-04-05 | 2021-04-23 |
| 16 | Конец проекта | 0d | 2021-04-05 | 2021-04-05 |

## Version 2 (saved 2021-03-30, file rk_01_3.mpp)

Note of the change: :twisted_rightwards_arrows: Merge branch 'feature/rk_1' into develop

Last finish stays 2021-04-23.

Changed:

| ID | Task | Finish | Duration | Total float |
| --- | --- | --- | --- | --- |
| 2 | **Программирование** | 2021-04-05 → 2021-04-23 (+18d) | 1d → 15d | none → 0d |
| 9 | **Тестирование и отладка** | 2021-04-05 → 2021-04-23 (+18d) | 1d → 15d | none → 0d |
| 13 | **Разработка документации** | 2021-04-05 → 2021-04-23 (+18d) | 1d → 15d | none → 0d |

## Version 3 (saved 2021-03-30, file rk_01_4.mpp)

Note of the change: :pencil: complete rk_1

Last finish 2021-04-23 → 2021-07-12 (+80d).

Changed:

| ID | Task | Start | Finish | Duration | Total float | Predecessors |
| --- | --- | --- | --- | --- | --- | --- |
| 2 | **Программирование** | 2021-04-05 → 2021-04-06 (+1d) | 2021-04-23 → 2021-05-21 (+28d) | 15d → 32d |  |  |
| 3 | Постановка задачи | 2021-04-05 → 2021-04-06 (+1d) | 2021-04-09 → 2021-04-12 (+3d) |  | 10d → 0d | none → 1FS+1d |
| 4 | Разработка интерфейса | 2021-04-05 → 2021-04-13 (+8d) | 2021-04-16 → 2021-04-26 (+10d) |  | 5d → 2d | none → 3 |
| 5 | Разработка модулей обработки данных | 2021-04-05 → 2021-04-27 (+22d) | 2021-04-23 → 2021-05-19 (+26d) |  | 0d → 2d | none → 4 |
| 6 | Разработка базы данных | 2021-04-05 → 2021-04-13 (+8d) | 2021-04-23 → 2021-05-04 (+11d) |  |  | none → 3 |
| 7 | Заполнение базы данных | 2021-04-05 → 2021-05-05 (+30d) | 2021-04-20 → 2021-05-21 (+31d) |  | 3d → 0d | none → 6 |
| 8 | Программирование завершено | 2021-04-05 → 2021-05-21 (+46d) | 2021-04-05 → 2021-05-21 (+46d) |  | 15d → 0d | none → 5, 7 |
| 9 | **Тестирование и отладка** | 2021-04-05 → 2021-05-17 (+42d) | 2021-04-23 → 2021-06-11 (+49d) | 15d → 20d | 0d → 20d |  |
| 10 | Подготовка тестовых наборов данных | 2021-04-05 → 2021-05-17 (+42d) | 2021-04-09 → 2021-05-21 (+42d) |  | 10d → 20d | none → 8FS-5d |
| 11 | Тестирование и исправление ошибок | 2021-04-05 → 2021-05-24 (+49d) | 2021-04-23 → 2021-06-11 (+49d) |  | 0d → 20d | none → 10 |
| 12 | Отладка завершена | 2021-04-05 → 2021-06-11 (+67d) | 2021-04-05 → 2021-06-11 (+67d) |  | 15d → 20d | none → 11 |
| 13 | **Разработка документации** | 2021-04-05 → 2021-06-07 (+63d) | 2021-04-23 → 2021-07-12 (+80d) | 15d → 25d |  |  |
| 14 | Составление программной документации | 2021-04-05 → 2021-06-07 (+63d) | 2021-04-16 → 2021-06-21 (+66d) |  | 5d → 0d | none → 8SS+10d |
| 15 | Составление пользовательской документации | 2021-04-05 → 2021-06-22 (+78d) | 2021-04-23 → 2021-07-12 (+80d) |  |  | none → 14 |
| 16 | Конец проекта | 2021-04-05 → 2021-07-12 (+98d) | 2021-04-05 → 2021-07-12 (+98d) |  |  | none → 15 |

## Version 4 (saved 2021-03-30, file rk_01_5.mpp)

Note of the change: :twisted_rightwards_arrows: Merge branch 'release/rk_01'

Last finish stays 2021-07-12.

Added:

| ID | Task | Duration | Start | Finish | Resources |
| --- | --- | --- | --- | --- | --- |
| 1 | **РК 1** | 68d | 2021-04-05 | 2021-07-12 | Бумага [0.6%]; Картриджи для принтера [1.2%] |

## Version 5 (saved 2021-03-30, file rk_01_6.mpp)

Note of the change: :twisted_rightwards_arrows: Merge branch 'release/rk_01'

Last finish stays 2021-07-12.

Changed:

| ID | Task | Start | Finish | Total float | Other |
| --- | --- | --- | --- | --- | --- |
| 3 | **Программирование** |  |  |  | resources none → Сервер базы данных |
| 4 | Постановка задачи |  |  |  | resources none → Аналитик; Ведущий программист |
| 5 | Разработка интерфейса |  |  |  | resources none → Ведущий программист; Программист 1 |
| 6 | Разработка модулей обработки данных |  |  |  | resources none → Программист 2; Программист 3 |
| 7 | Разработка базы данных |  |  |  | resources none → Аналитик; Программист 1; Программист 2 |
| 8 | Заполнение базы данных |  |  |  | resources none → Наборщики данных [200%] |
| 10 | **Тестирование и отладка** | 2021-05-17 → 2021-05-20 (+3d) | 2021-06-11 → 2021-06-17 (+6d) | 20d → 17d |  |
| 11 | Подготовка тестовых наборов данных | 2021-05-17 → 2021-05-20 (+3d) | 2021-05-21 → 2021-05-26 (+5d) | 20d → 17d | resources none → Программист 1; Программист 3 |
| 12 | Тестирование и исправление ошибок | 2021-05-24 → 2021-05-27 (+3d) | 2021-06-11 → 2021-06-17 (+6d) | 20d → 17d | resources none → Ведущий программист; Программист 2 |
| 13 | Отладка завершена | 2021-06-11 → 2021-06-17 (+6d) | 2021-06-11 → 2021-06-17 (+6d) | 20d → 17d |  |
| 14 | **Разработка документации** |  |  |  | resources none → Картриджи для принтера; Бумага |
| 15 | Составление программной документации |  |  |  | resources none → Технический писатель |
| 16 | Составление пользовательской документации |  |  |  | resources none → Техниечский писатель |

## Version 6 (saved 2021-03-30, file rk_01_7-8.mpp)

Note of the change: :twisted_rightwards_arrows: Merge branch 'release/rk_01'

Last finish 2021-07-12 → 2021-08-03 (+22d).

Added:

| ID | Task | Duration | Start | Finish | Constraint | Resources |
| --- | --- | --- | --- | --- | --- | --- |
| 18 | **Профилактика оборудования** | 45.5d | 2021-04-27 09:00 | 2021-07-06 12:00 |  |  |
| 19 | Профилактика оборудования 1 | 3h | 2021-04-27 09:00 | 2021-04-27 12:00 | start no earlier than 2021-04-27 09:00 | Специалист по профилактике |
| 20 | Профилактика оборудования 2 | 3h | 2021-05-11 09:00 | 2021-05-11 12:00 | start no earlier than 2021-05-11 09:00 | Специалист по профилактике |
| 21 | Профилактика оборудования 3 | 3h | 2021-05-25 09:00 | 2021-05-25 12:00 | start no earlier than 2021-05-25 09:00 | Специалист по профилактике |
| 22 | Профилактика оборудования 4 | 3h | 2021-06-08 09:00 | 2021-06-08 12:00 | start no earlier than 2021-06-08 09:00 | Специалист по профилактике |
| 23 | Профилактика оборудования 5 | 3h | 2021-06-22 09:00 | 2021-06-22 12:00 | start no earlier than 2021-06-22 09:00 | Специалист по профилактике |
| 24 | Профилактика оборудования 6 | 3h | 2021-07-06 09:00 | 2021-07-06 12:00 | start no earlier than 2021-07-06 09:00 | Специалист по профилактике |

Changed:

| ID | Task | Start | Finish | Duration | Total float |
| --- | --- | --- | --- | --- | --- |
| 1 | **РК 1** | 2021-04-05 → 2021-04-05 09:00 | 2021-07-12 → 2021-08-03 11:00 (+22d) | 68d → 81d |  |
| 2 | Начало реализации проекта | 2021-04-05 → 2021-04-05 09:00 | 2021-04-05 → 2021-04-05 09:00 |  |  |
| 3 | **Программирование** | 2021-04-06 → 2021-04-06 09:00 | 2021-05-21 → 2021-06-11 13:00 (+21d) | 32d → 45d |  |
| 4 | Постановка задачи | 2021-04-06 → 2021-04-06 09:00 | 2021-04-12 → 2021-04-12 18:00 |  |  |
| 5 | Разработка интерфейса | 2021-04-13 → 2021-04-13 09:00 | 2021-04-26 → 2021-04-26 18:00 |  | 2d → 0d |
| 6 | Разработка модулей обработки данных | 2021-04-27 → 2021-05-20 16:00 (+23d) | 2021-05-19 → 2021-06-11 13:00 (+23d) |  | 2d → 0d |
| 7 | Разработка базы данных | 2021-04-13 → 2021-04-27 09:00 (+14d) | 2021-05-04 → 2021-05-20 16:00 (+16d) |  | 0d → 3d |
| 8 | Заполнение базы данных | 2021-05-05 → 2021-05-20 16:00 (+15d) | 2021-05-21 → 2021-06-08 10:00 (+18d) |  | 0d → 3d |
| 9 | Программирование завершено | 2021-05-21 → 2021-06-11 13:00 (+21d) | 2021-05-21 → 2021-06-11 13:00 (+21d) |  |  |
| 10 | **Тестирование и отладка** | 2021-05-20 → 2021-06-11 14:00 (+22d) | 2021-06-17 → 2021-07-13 11:00 (+26d) |  | 17d → 15d |
| 11 | Подготовка тестовых наборов данных | 2021-05-20 → 2021-06-11 14:00 (+22d) | 2021-05-26 → 2021-06-21 13:00 (+26d) |  | 17d → 15d |
| 12 | Тестирование и исправление ошибок | 2021-05-27 → 2021-06-21 14:00 (+25d) | 2021-06-17 → 2021-07-13 11:00 (+26d) |  | 17d → 15d |
| 13 | Отладка завершена | 2021-06-17 → 2021-07-13 11:00 (+26d) | 2021-06-17 → 2021-07-13 11:00 (+26d) |  | 17d → 15d |
| 14 | **Разработка документации** | 2021-06-07 → 2021-06-28 17:00 (+21d) | 2021-07-12 → 2021-08-03 11:00 (+22d) |  |  |
| 15 | Составление программной документации | 2021-06-07 → 2021-06-28 17:00 (+21d) | 2021-06-21 → 2021-07-13 11:00 (+22d) |  |  |
| 16 | Составление пользовательской документации | 2021-06-22 → 2021-07-13 11:00 (+21d) | 2021-07-12 → 2021-08-03 11:00 (+22d) |  |  |
| 17 | Конец проекта | 2021-07-12 → 2021-08-03 11:00 (+22d) | 2021-07-12 → 2021-08-03 11:00 (+22d) |  |  |

## Version 7 (saved 2021-03-30, file rk_01_8_finish.mpp)

Note of the change: :twisted_rightwards_arrows: Merge branch 'feature/rk_1' into develop

Last finish stays 2021-08-03.

Added:

| ID | Task | Duration | Start | Finish | Constraint | Resources |
| --- | --- | --- | --- | --- | --- | --- |
| 25 | Профилактика оборудования 7 | 3h | 2021-07-20 09:00 | 2021-07-20 12:00 | start no earlier than 2021-07-20 09:00 | Специалист по профилактике |
| 26 | Профилактика оборудования 8 | 3h | 2021-08-03 09:00 | 2021-08-03 12:00 | start no earlier than 2021-08-03 09:00 | Специалист по профилактике |

Changed:

| ID | Task | Start | Finish | Duration |
| --- | --- | --- | --- | --- |
| 1 | **РК 1** |  | 2021-08-03 11:00 → 2021-08-03 18:00 |  |
| 14 | **Разработка документации** |  | 2021-08-03 11:00 → 2021-08-03 18:00 |  |
| 16 | Составление пользовательской документации |  | 2021-08-03 11:00 → 2021-08-03 18:00 |  |
| 17 | Конец проекта | 2021-08-03 11:00 → 2021-08-03 18:00 | 2021-08-03 11:00 → 2021-08-03 18:00 |  |
| 18 | **Профилактика оборудования** |  | 2021-07-06 12:00 → 2021-08-03 12:00 (+28d) | 45.5d → 64.75d |

## Version 8 (saved 2021-03-30, file rk_01_9.mpp)

Note of the change: :twisted_rightwards_arrows: Merge branch 'feature/rk_1' into develop

Last finish 2021-08-03 → 2021-07-19 (-15d).

Removed: 25 Профилактика оборудования 7; 26 Профилактика оборудования 8

Changed:

| ID | Task | Start | Finish | Duration | Total float | Other |
| --- | --- | --- | --- | --- | --- | --- |
| 1 | **РК 1** |  | 2021-08-03 18:00 → 2021-07-19 15:00 (-15d) | 81d → 70.38d |  | baseline start none → 2021-04-05 09:00; baseline finish none → 2021-07-19 15:00 |
| 2 | Начало реализации проекта |  |  |  |  | baseline start none → 2021-04-05 09:00; baseline finish none → 2021-04-05 09:00 |
| 3 | **Программирование** |  | 2021-06-11 13:00 → 2021-05-27 13:00 (-15d) | 45d → 34.38d |  | baseline start none → 2021-04-06 09:00; baseline finish none → 2021-05-27 13:00 |
| 4 | Постановка задачи |  |  |  |  | baseline start none → 2021-04-06 09:00; baseline finish none → 2021-04-12 18:00 |
| 5 | Разработка интерфейса | 2021-04-13 09:00 → 2021-05-05 12:00 (+22d) | 2021-04-26 18:00 → 2021-05-13 16:00 (+17d) | 10d → 5d |  | resources Ведущий программист; Программист 1 → Ведущий программист; Программист 1; Программист 2; Программист 3; baseline start none → 2021-05-05 12:00; baseline finish none → 2021-05-13 16:00 |
| 6 | Разработка модулей обработки данных | 2021-05-20 16:00 → 2021-05-13 16:00 (-7d) | 2021-06-11 13:00 → 2021-05-27 13:00 (-15d) | 15d → 9.38d |  | resources Программист 2; Программист 3 → Программист 2; Программист 3; Программист 1; baseline start none → 2021-05-13 16:00; baseline finish none → 2021-05-27 13:00 |
| 7 | Разработка базы данных | 2021-04-27 09:00 → 2021-04-13 09:00 (-14d) | 2021-05-20 16:00 → 2021-05-05 12:00 (-15d) |  | 3d → 2.38d | baseline start none → 2021-04-13 09:00; baseline finish none → 2021-05-05 12:00 |
| 8 | Заполнение базы данных | 2021-05-20 16:00 → 2021-05-05 12:00 (-15d) | 2021-06-08 10:00 → 2021-05-24 16:00 (-15d) |  | 3d → 2.38d | baseline start none → 2021-05-05 12:00; baseline finish none → 2021-05-24 16:00 |
| 9 | Программирование завершено | 2021-06-11 13:00 → 2021-05-27 13:00 (-15d) | 2021-06-11 13:00 → 2021-05-27 13:00 (-15d) |  |  | baseline start none → 2021-05-27 13:00; baseline finish none → 2021-05-27 13:00 |
| 10 | **Тестирование и отладка** | 2021-06-11 14:00 → 2021-05-27 14:00 (-15d) | 2021-07-13 11:00 → 2021-06-24 14:40 (-19d) | 20d → 18.33d | 15d → 16.67d | baseline start none → 2021-05-27 14:00; baseline finish none → 2021-06-24 14:40 |
| 11 | Подготовка тестовых наборов данных | 2021-06-11 14:00 → 2021-05-27 14:00 (-15d) | 2021-06-21 13:00 → 2021-06-01 16:40 (-20d) | 5d → 3.33d | 15d → 16.67d | resources Программист 1; Программист 3 → Программист 1; Программист 3; Программист 2; baseline start none → 2021-05-27 14:00; baseline finish none → 2021-06-01 16:40 |
| 12 | Тестирование и исправление ошибок | 2021-06-21 14:00 → 2021-06-01 16:40 (-20d) | 2021-07-13 11:00 → 2021-06-24 14:40 (-19d) |  | 15d → 16.67d | baseline start none → 2021-06-01 16:40; baseline finish none → 2021-06-24 14:40 |
| 13 | Отладка завершена | 2021-07-13 11:00 → 2021-06-24 14:40 (-19d) | 2021-07-13 11:00 → 2021-06-24 14:40 (-19d) |  | 15d → 16.67d | baseline start none → 2021-06-24 14:40; baseline finish none → 2021-06-24 14:40 |
| 14 | **Разработка документации** | 2021-06-28 17:00 → 2021-06-10 17:00 (-18d) | 2021-08-03 18:00 → 2021-07-19 15:00 (-15d) |  |  | baseline start none → 2021-06-10 17:00; baseline finish none → 2021-07-19 15:00 |
| 15 | Составление программной документации | 2021-06-28 17:00 → 2021-06-10 17:00 (-18d) | 2021-07-13 11:00 → 2021-06-28 11:00 (-15d) |  |  | baseline start none → 2021-06-10 17:00; baseline finish none → 2021-06-28 11:00 |
| 16 | Составление пользовательской документации | 2021-07-13 11:00 → 2021-06-28 11:00 (-15d) | 2021-08-03 18:00 → 2021-07-19 15:00 (-15d) |  |  | baseline start none → 2021-06-28 11:00; baseline finish none → 2021-07-19 15:00 |
| 17 | Конец проекта | 2021-08-03 18:00 → 2021-07-19 15:00 (-15d) | 2021-08-03 18:00 → 2021-07-19 15:00 (-15d) |  |  | baseline start none → 2021-07-19 15:00; baseline finish none → 2021-07-19 15:00 |
| 18 | **Профилактика оборудования** |  | 2021-08-03 12:00 → 2021-07-06 12:00 (-28d) | 64.75d → 45.5d |  | baseline start none → 2021-04-27 09:00; baseline finish none → 2021-07-06 12:00 |
| 19 | Профилактика оборудования 1 |  |  |  |  | baseline start none → 2021-04-27 09:00; baseline finish none → 2021-04-27 12:00 |
| 20 | Профилактика оборудования 2 |  |  |  |  | baseline start none → 2021-05-11 09:00; baseline finish none → 2021-05-11 12:00 |
| 21 | Профилактика оборудования 3 |  |  |  |  | baseline start none → 2021-05-25 09:00; baseline finish none → 2021-05-25 12:00 |
| 22 | Профилактика оборудования 4 |  |  |  |  | baseline start none → 2021-06-08 09:00; baseline finish none → 2021-06-08 12:00 |
| 23 | Профилактика оборудования 5 |  |  |  |  | baseline start none → 2021-06-22 09:00; baseline finish none → 2021-06-22 12:00 |
| 24 | Профилактика оборудования 6 |  |  |  |  | baseline start none → 2021-07-06 09:00; baseline finish none → 2021-07-06 12:00 |

## Version 9 (data date 2021-07-01, saved 2021-03-30, file rk_01_10.mpp)

Note of the change: :twisted_rightwards_arrows: Merge branch 'feature/rk_1' into develop

Last finish 2021-07-19 → 2021-08-02 (+14d). Complete tasks 0 → 13.

Changed:

| ID | Task | Start | Finish | Duration | Complete | Total float |
| --- | --- | --- | --- | --- | --- | --- |
| 1 | **РК 1** | 2021-04-05 09:00 A | 2021-07-19 15:00 → 2021-08-02 12:00 (+14d) | 70.38d → 79.75d | 0% → 64% |  |
| 2 | Начало реализации проекта | 2021-04-05 09:00 A | 2021-04-05 09:00 A |  | 0% → 100% | 0d → none |
| 3 | **Программирование** | 2021-04-06 09:00 A | 2021-05-27 13:00 → 2021-06-10 11:00 A (+14d) | 34.38d → 43.75d | 0% → 100% | 0d → none |
| 4 | Постановка задачи | 2021-04-06 09:00 A | 2021-04-12 18:00 A |  | 0% → 100% | 0d → none |
| 5 | Разработка интерфейса | 2021-05-05 12:00 A | 2021-05-13 16:00 A |  | 0% → 100% | 0d → none |
| 6 | Разработка модулей обработки данных | 2021-05-13 16:00 A | 2021-05-27 13:00 → 2021-06-10 11:00 A (+14d) | 9.38d → 18.75d | 0% → 100% | 0d → none |
| 7 | Разработка базы данных | 2021-04-13 09:00 A | 2021-05-05 12:00 A |  | 0% → 100% | 2.38d → none |
| 8 | Заполнение базы данных | 2021-05-05 12:00 A | 2021-05-24 16:00 → 2021-06-08 13:00 A (+15d) | 12d → 22.38d | 0% → 100% | 2.38d → none |
| 9 | Программирование завершено | 2021-05-27 13:00 → 2021-06-10 11:00 A (+14d) | 2021-05-27 13:00 → 2021-06-10 11:00 A (+14d) |  | 0% → 100% | 0d → none |
| 10 | **Тестирование и отладка** | 2021-05-27 14:00 → 2021-06-10 11:00 A (+14d) | 2021-06-24 14:40 → 2021-07-08 11:40 (+14d) |  | 0% → 18% |  |
| 11 | Подготовка тестовых наборов данных | 2021-05-27 14:00 → 2021-06-10 11:00 A (+14d) | 2021-06-01 16:40 → 2021-06-16 14:40 A (+15d) |  | 0% → 100% | 16.67d → none |
| 12 | Тестирование и исправление ошибок | 2021-06-01 16:40 → 2021-06-16 14:40 (+15d) | 2021-06-24 14:40 → 2021-07-08 11:40 (+14d) |  |  |  |
| 13 | Отладка завершена | 2021-06-24 14:40 → 2021-07-08 11:40 (+14d) | 2021-06-24 14:40 → 2021-07-08 11:40 (+14d) |  |  |  |
| 14 | **Разработка документации** | 2021-06-10 17:00 → 2021-06-25 15:00 (+15d) | 2021-07-19 15:00 → 2021-08-02 12:00 (+14d) |  |  |  |
| 15 | Составление программной документации | 2021-06-10 17:00 → 2021-06-25 15:00 (+15d) | 2021-06-28 11:00 → 2021-07-09 18:00 (+11d) |  |  |  |
| 16 | Составление пользовательской документации | 2021-06-28 11:00 → 2021-07-12 09:00 (+14d) | 2021-07-19 15:00 → 2021-08-02 12:00 (+14d) |  |  |  |
| 17 | Конец проекта | 2021-07-19 15:00 → 2021-08-02 12:00 (+14d) | 2021-07-19 15:00 → 2021-08-02 12:00 (+14d) |  |  |  |
| 18 | **Профилактика оборудования** | 2021-04-27 09:00 A |  |  | 0% → 83% |  |
| 19 | Профилактика оборудования 1 | 2021-04-27 09:00 A | 2021-04-27 12:00 A |  | 0% → 100% |  |
| 20 | Профилактика оборудования 2 | 2021-05-11 09:00 A | 2021-05-11 12:00 A |  | 0% → 100% |  |
| 21 | Профилактика оборудования 3 | 2021-05-25 09:00 A | 2021-05-25 12:00 A |  | 0% → 100% |  |
| 22 | Профилактика оборудования 4 | 2021-06-08 09:00 A | 2021-06-08 12:00 A |  | 0% → 100% |  |
| 23 | Профилактика оборудования 5 | 2021-06-22 09:00 A | 2021-06-22 12:00 A |  | 0% → 100% |  |
